Schedule from GanttProject, 2024-09-02 to 2024-12-30.

## Calendars

- Project calendar: Mon-Fri working; Sat-Sun off.

## Resources

| Resource |
| --- |
| Manager-QA |
| Test TL |
| Web TL |
| Back dev 1 |
| Back dev 2 |
| Back dev 3 |
| Architect |
| Front dev 1 |
| Front dev 2 |
| Front dev 3 |
| Sys dev 1 |
| Sys dev 2 |
| Sys dev 3 |
| Sys dev 4 |
| Test Analyst 1 |
| Test Analyst 2 |
| QA |
| Devops |
| Analyst |

## Schedule

| ID | WBS | Task | Type | Duration | Start | Finish | Predecessors | Complete | Resources | Cost |
| --- | --- | --- | --- | --- | --- | --- | --- | --- | --- | --- |
| 1 | 1 | **OSTEST.ПУИТП** |  | 85d | 2024-09-02 | 2024-12-27 |  |  |  |  |
| 2 | 1.1 | Общее управление |  | 85d | 2024-09-02 | 2024-12-27 |  |  | Manager-QA | 40 |
| 3 | 1.2 | Web: управление |  | 75d | 2024-09-16 | 2024-12-27 | 6 |  | Web TL; Analyst | 40 |
| 4 | 1.3 | Тесты: управление |  | 75d | 2024-09-16 | 2024-12-27 | 6 |  | Test TL | 40 |
| 5 | 1.4 | Дополнение спецификации API обвязки и Exec |  | 75d | 2024-09-16 | 2024-12-27 | 12, 16 |  | Architect | 30 |
| 6 | 1.5 | **Фаза 0 - подготовка** |  | 10d | 2024-09-02 | 2024-09-13 |  |  |  |  |
| 7 | 1.5.1 | Фронт: инструкции |  | 10d | 2024-09-02 | 2024-09-13 |  |  | Manager-QA | 3 |
| 8 | 1.5.2 | Фронт: заготовка |  | 5d | 2024-09-09 | 2024-09-13 |  |  | Manager-QA | 6 |
| 9 | 1.5.3 | Бэк: инструкции |  | 10d | 2024-09-02 | 2024-09-13 |  |  | Web TL | 3 |
| 10 | 1.5.4 | Бэк: заготовка |  | 5d | 2024-09-09 | 2024-09-13 |  |  | Web TL | 4 |
| 11 | 1.5.5 | Схема данных |  | 10d | 2024-09-02 | 2024-09-13 |  |  | Architect | 6 |
| 12 | 1.5.6 | Описание API обвязки |  | 5d | 2024-09-09 | 2024-09-13 |  |  | Architect | 6 |
| 13 | 1.5.7 | Exec: демо |  | 10d | 2024-09-02 | 2024-09-13 |  |  | Test Analyst 1 | 4 |
| 14 | 1.5.8 | Exec: инструкции |  | 10d | 2024-09-02 | 2024-09-13 |  |  | Test Analyst 2 | 3 |
| 15 | 1.5.9 | Тесты: заготовка |  | 5d | 2024-09-02 | 2024-09-06 |  |  | Test TL | 6 |
| 16 | 1.5.10 | Описание API Exec |  | 5d | 2024-09-09 | 2024-09-13 |  |  | Test TL; Test Analyst 2 | 12 |
| 17 | 1.6 | Фаза 0 - дедлайн | milestone | 0d | 2024-09-16 | 2024-09-16 | 6 |  |  |  |
| 18 | 1.7 | **Фаза 1** |  | 25d | 2024-09-16 | 2024-10-18 | 6 |  |  |  |
| 19 | 1.7.1 | Тесты: доанализ требований |  | 25d | 2024-09-16 | 2024-10-18 |  |  | Test Analyst 1 | 10 |
| 20 | 1.7.2 | Web: доанализ требований |  | 25d | 2024-09-16 | 2024-10-18 |  |  | Test Analyst 2 | 10 |
| 21 | 1.7.3 | Автоматизация локального развертывания |  | 5d | 2024-09-16 | 2024-09-20 |  |  | Devops | 3 |
| 22 | 1.7.4 | Ручное развертывание в виртуалке |  | 10d | 2024-09-23 | 2024-10-04 | 21 |  | Test TL; Devops | 10 |
| 23 | 1.7.5 | Github actions для развертывания по мерджу |  | 10d | 2024-10-07 | 2024-10-18 | 22 |  | Devops | 6 |
| 24 | 1.7.6 | Разработка тестовой методологии |  | 15d | 2024-09-16 | 2024-10-04 |  |  | Manager-QA | 10 |
| 25 | 1.7.7 | Изучение требований, терминологии, тестирования |  | 15d | 2024-09-16 | 2024-10-04 |  |  | QA | 15 |
| 26 | 1.7.8 | QA тестов 1 |  | 10d | 2024-10-07 | 2024-10-18 | 24, 25 |  | Manager-QA [50%]; QA [50%] | 10 |
| 27 | 1.7.9 | Тесты: обучение |  | 5d | 2024-09-16 | 2024-09-20 |  |  | Sys dev 3; Sys dev 4 | 4 |
| 28 | 1.7.10 | Тесты исполняемого файла |  | 5d | 2024-09-23 | 2024-09-27 | 27 |  | Sys dev 3 | 2 |
| 29 | 1.7.11 | Тесты модуля конфигурации |  | 5d | 2024-09-23 | 2024-09-27 | 27 |  | Sys dev 4 | 2 |
| 30 | 1.7.12 | Тесты cli |  | 5d | 2024-09-30 | 2024-10-04 |  |  | Sys dev 3 | 2 |
| 31 | 1.7.13 | Тесты логгера |  | 5d | 2024-09-30 | 2024-10-04 |  |  | Sys dev 4 | 2 |
| 32 | 1.7.14 | Тесты IPC |  | 5d | 2024-10-07 | 2024-10-11 |  |  | Sys dev 3 | 2 |
| 33 | 1.7.15 | Тесты корректности кэша |  | 5d | 2024-10-07 | 2024-10-11 |  |  | Sys dev 4 | 2 |
| 34 | 1.7.16 | Интеграция: базовые тесты |  | 5d | 2024-10-14 | 2024-10-18 | 28, 29, 30, 31, 32, 33, 37, 38, 39, 40 |  | Sys dev 1; Sys dev 2; Sys dev 3; Sys dev 4 | 16 |
| 35 | 1.7.17 | Exec: обучение |  | 5d | 2024-09-16 | 2024-09-20 |  |  | Sys dev 1; Sys dev 2 | 4 |
| 36 | 1.7.18 | Exec: запуск бинарника |  | 5d | 2024-09-23 | 2024-09-27 | 35 |  | Sys dev 1 | 4 |
| 37 | 1.7.19 | Exec: получение stdin |  | 5d | 2024-09-30 | 2024-10-04 | 36 |  | Sys dev 1 | 2 |
| 38 | 1.7.20 | Exec: получение сокета |  | 5d | 2024-09-30 | 2024-10-04 | 36 |  | Sys dev 2 | 2 |
| 39 | 1.7.21 | Exec: получение вывода |  | 5d | 2024-10-07 | 2024-10-11 | 36 |  | Sys dev 1 | 2 |
| 40 | 1.7.22 | Exec: получение статистик /proc |  | 5d | 2024-10-07 | 2024-10-11 | 36 |  | Sys dev 2 | 2 |
| 41 | 1.7.23 | Фронт: обучение |  | 5d | 2024-09-16 | 2024-09-20 |  |  | Front dev 1; Front dev 2; Front dev 3 | 6 |
| 42 | 1.7.24 | Авторизация пользователя |  | 5d | 2024-09-16 | 2024-09-20 |  |  | Back dev 1 | 4 |
| 43 | 1.7.25 | Изменение пароля |  | 5d | 2024-09-23 | 2024-09-27 | 42 |  | Back dev 1 | 4 |
| 44 | 1.7.26 | Получение групп для пользователя.. |  | 5d | 2024-09-30 | 2024-10-04 |  |  | Back dev 1 | 2 |
| 45 | 1.7.27 | Создание и редактирование группы |  | 5d | 2024-10-07 | 2024-10-11 | 44 |  | Back dev 1 | 2 |
| 46 | 1.7.28 | Интеграция: пользователи |  | 5d | 2024-10-14 | 2024-10-18 | 42, 43, 44, 45, 47, 48, 49, 50, 51, 52, 53 |  | Back dev 1; Front dev 1 | 8 |
| 47 | 1.7.29 | Восстановление пароля |  | 5d | 2024-09-23 | 2024-09-27 | 41 |  | Front dev 1 | 1 |
| 48 | 1.7.30 | Welcome страница |  | 5d | 2024-09-23 | 2024-09-27 | 41 |  | Front dev 1 | 1 |
| 49 | 1.7.31 | Страница входа |  | 5d | 2024-09-23 | 2024-09-27 | 41 |  | Front dev 1 | 1 |
| 50 | 1.7.32 | Навигация в шапке |  | 5d | 2024-09-30 | 2024-10-04 |  |  | Front dev 1 | 2 |
| 51 | 1.7.33 | Личный кабинет |  | 5d | 2024-09-30 | 2024-10-04 | 49 |  | Front dev 1 | 2 |
| 52 | 1.7.34 | Создание редактирование группы |  | 5d | 2024-10-07 | 2024-10-11 |  |  | Front dev 1 | 2 |
| 53 | 1.7.35 | Экран групп |  | 5d | 2024-10-07 | 2024-10-11 |  |  | Front dev 1 | 2 |
| 54 | 1.7.36 | Восстановление пароля |  | 5d | 2024-09-16 | 2024-09-20 |  |  | Back dev 2 | 1 |
| 55 | 1.7.37 | Имплементация создания теста |  | 5d | 2024-09-16 | 2024-09-20 |  |  | Back dev 2 | 2 |
| 56 | 1.7.38 | Имплементация получения теста |  | 5d | 2024-09-23 | 2024-09-27 | 55 |  | Back dev 2 | 1 |
| 57 | 1.7.39 | Имплементация поиска тестов по имени |  | 5d | 2024-09-23 | 2024-09-27 | 55 |  | Back dev 2 | 1 |
| 58 | 1.7.40 | Имплементация удаления тестов |  | 5d | 2024-09-30 | 2024-10-04 | 55 |  | Back dev 2 | 2 |
| 59 | 1.7.41 | Имплементация редактирования тестов |  | 5d | 2024-09-30 | 2024-10-04 | 55 |  | Back dev 2 | 1 |
| 60 | 1.7.42 | Интеграция: тесты |  | 5d | 2024-10-14 | 2024-10-18 | 54, 55, 56, 57, 58, 59, 61, 62, 63, 64 |  | Back dev 2; Front dev 2 | 8 |
| 61 | 1.7.43 | Модальное окно создания теста |  | 5d | 2024-09-23 | 2024-09-27 | 41 |  | Front dev 2 | 3 |
| 62 | 1.7.44 | Модальное окно просмотра теста |  | 5d | 2024-09-30 | 2024-10-04 |  |  | Front dev 2 | 2 |
| 63 | 1.7.45 | Модальное окно редактирования теста |  | 5d | 2024-10-07 | 2024-10-11 |  | 30% | Front dev 2 | 1 |
| 64 | 1.7.46 | Страница просмотра тестов |  | 5d | 2024-10-07 | 2024-10-11 |  |  | Front dev 2 | 2 |
| 65 | 1.7.47 | Имплементация создания лабораторной |  | 5d | 2024-09-16 | 2024-09-20 |  |  | Back dev 3 | 2 |
| 66 | 1.7.48 | Имплементация получения лабораторной |  | 5d | 2024-09-16 | 2024-09-20 |  |  | Back dev 3 | 1 |
| 67 | 1.7.49 | Имплементация редактирования лабораторной |  | 5d | 2024-09-23 | 2024-09-27 | 65 |  | Back dev 3 | 1 |
| 68 | 1.7.50 | Имплементация удаления лабораторной |  | 5d | 2024-09-23 | 2024-09-27 | 65 |  | Back dev 3 | 2 |
| 69 | 1.7.51 | Получение попыток сдачи |  | 5d | 2024-09-30 | 2024-10-04 |  |  | Back dev 3 | 2 |
| 70 | 1.7.52 | Интеграция: лабораторные |  | 5d | 2024-10-14 | 2024-10-18 | 65, 66, 67, 68, 71, 72, 73, 74 |  | Back dev 2; Front dev 3 | 8 |

| ID | WBS | Task | Type | Duration | Start | Finish | Predecessors | Resources | Cost |
| --- | --- | --- | --- | --- | --- | --- | --- | --- | --- |
| 71 | 1.7.53 | Модальное окно создания лабораторной |  | 5d | 2024-09-23 | 2024-09-27 | 41 | Front dev 3 | 2 |
| 72 | 1.7.54 | Модальное окно редактирования лабораторной |  | 5d | 2024-09-23 | 2024-09-27 | 41 | Front dev 3 | 1 |
| 73 | 1.7.55 | Страница просмотра лабораторной |  | 5d | 2024-09-30 | 2024-10-04 |  | Front dev 3 | 3 |
| 74 | 1.7.56 | Страница просмотра лабораторных |  | 5d | 2024-10-07 | 2024-10-11 |  | Front dev 3 | 3 |
| 75 | 1.8 | Фаза 1 - дедлайн | milestone | 0d | 2024-10-28 | 2024-10-28 | 18 |  |  |
| 76 | 1.9 | **Фаза 2** |  | 20d | 2024-10-28 | 2024-11-22 | 18 |  |  |
| 77 | 1.9.1 | Тесты: доанализ требований 2 |  | 20d | 2024-10-28 | 2024-11-22 |  | Test Analyst 1 | 8 |
| 78 | 1.9.2 | Web: доанализ требований 2 |  | 20d | 2024-10-28 | 2024-11-22 |  | Test Analyst 2 | 8 |
| 79 | 1.9.3 | Мониторинг + алертинг |  | 15d | 2024-10-28 | 2024-11-15 |  | Devops | 10 |
| 80 | 1.9.4 | QA обвязки 1 |  | 10d | 2024-10-28 | 2024-11-08 |  | Manager-QA [50%]; QA [50%] | 15 |
| 81 | 1.9.5 | QA тестов 2 |  | 10d | 2024-11-11 | 2024-11-22 |  | Manager-QA [50%]; QA [50%] | 15 |
| 82 | 1.9.6 | Тесты многозадачности |  | 5d | 2024-10-28 | 2024-11-01 |  | Sys dev 3 | 2 |
| 83 | 1.9.7 | Тесты сети |  | 10d | 2024-10-28 | 2024-11-08 |  | Sys dev 4 | 2 |
| 84 | 1.9.8 | Тесты кэша |  | 5d | 2024-11-11 | 2024-11-15 |  | Sys dev 3 | 2 |
| 85 | 1.9.9 | Нагрузочные тесты |  | 10d | 2024-11-04 | 2024-11-15 |  | Sys dev 4 | 6 |
| 86 | 1.9.10 | Интеграция: нагрузочные тесты |  | 5d | 2024-11-18 | 2024-11-22 | 82, 83, 84, 85, 87, 88 | Sys dev 1; Sys dev 2; Sys dev 3; Sys dev 4 | 16 |
| 87 | 1.9.11 | Exec: жесткие ограничения cgroup 1 |  | 15d | 2024-10-28 | 2024-11-15 |  | Sys dev 1 | 6 |
| 88 | 1.9.12 | Exec: жесткие ограничения cgroup 2 |  | 15d | 2024-10-28 | 2024-11-15 |  | Sys dev 2 | 6 |
| 89 | 1.9.13 | Часть модального окна создания/редактирования лабораторной - форма выбора тестов |  | 5d | 2024-10-28 | 2024-11-01 | 57, 71, 72 | Front dev 3 | 1 |
| 90 | 1.9.14 | Страница просмотра попыток сдачи |  | 5d | 2024-11-04 | 2024-11-08 | 69 | Front dev 3 | 2 |
| 91 | 1.9.15 | Модальное окно загрузки лабораторных |  | 5d | 2024-11-11 | 2024-11-15 | 90 | Front dev 3 | 2 |
| 92 | 1.9.16 | Интеграция попыток сдачи |  | 5d | 2024-11-18 | 2024-11-22 | 89, 90, 91, 93 | Back dev 3; Front dev 3 | 8 |
| 93 | 1.9.17 | Проверка лабораторной в новой попытке сдачи |  | 10d | 2024-10-28 | 2024-11-08 |  | Back dev 3 | 8 |
| 94 | 1.9.18 | Создание сессий сдачи |  | 5d | 2024-10-28 | 2024-11-01 |  | Back dev 2 | 2 |
| 95 | 1.9.19 | Получение сессий сдачи |  | 5d | 2024-11-04 | 2024-11-08 |  | Back dev 2 | 2 |
| 96 | 1.9.20 | Поиск и фильтрация сессий сдачи |  | 5d | 2024-11-11 | 2024-11-15 |  | Back dev 2 | 2 |
| 97 | 1.9.21 | Интеграция сессий сдачи |  | 5d | 2024-11-18 | 2024-11-22 | 94, 95, 96, 98, 99, 100 | Back dev 2; Front dev 2 | 8 |
| 98 | 1.9.22 | Просмотр сессий сдачи |  | 5d | 2024-10-28 | 2024-11-01 |  | Front dev 2 | 2 |
| 99 | 1.9.23 | Просмотр сессий сдачи студентов с поиском |  | 5d | 2024-11-04 | 2024-11-08 |  | Front dev 2 | 2 |
| 100 | 1.9.24 | Модификация страницы просмотра сессии сдачи - для преподавателя |  | 5d | 2024-11-11 | 2024-11-15 |  | Front dev 2 | 1.5 |
| 101 | 1.9.25 | Личная информация по всем пользователям |  | 5d | 2024-10-28 | 2024-11-01 |  | Back dev 1 | 2 |
| 102 | 1.9.26 | Личная информация пользователя |  | 5d | 2024-10-28 | 2024-11-01 |  | Back dev 1 | 2 |
| 103 | 1.9.27 | Создание/редактирование пользователя |  | 5d | 2024-11-04 | 2024-11-08 |  | Back dev 1 | 2 |
| 104 | 1.9.28 | Создание множества пользователей |  | 5d | 2024-11-11 | 2024-11-15 |  | Back dev 1 | 2 |
| 105 | 1.9.29 | Интеграция пользователей |  | 5d | 2024-11-18 | 2024-11-22 | 101, 102, 103, 104, 106, 107, 108 | Back dev 1; Front dev 1 | 8 |
| 106 | 1.9.30 | Модалки создания редактирования пользователя |  | 5d | 2024-10-28 | 2024-11-01 |  | Front dev 1 | 2 |
| 107 | 1.9.31 | Экран всех пользователей для админа |  | 5d | 2024-11-04 | 2024-11-08 |  | Front dev 1 | 2 |
| 108 | 1.9.32 | Переход на экран группы |  | 5d | 2024-11-11 | 2024-11-15 |  | Front dev 1 | 2 |
| 109 | 1.10 | Фаза 2 - дедлайн | milestone | 0d | 2024-12-02 | 2024-12-02 | 76 |  |  |

| ID | WBS | Task | Type | Duration | Start | Finish | Predecessors | Resources | Cost |
| --- | --- | --- | --- | --- | --- | --- | --- | --- | --- |
| 110 | 1.11 | **Фаза 3** |  | 20d | 2024-12-02 | 2024-12-27 | 76 |  |  |
| 111 | 1.11.1 | Web: доанализ требований 3 |  | 20d | 2024-12-02 | 2024-12-27 |  | Test Analyst 2 | 8 |
| 112 | 1.11.2 | QA обвязки 2 |  | 10d | 2024-12-02 | 2024-12-13 |  | Manager-QA [50%]; QA [50%] | 15 |
| 113 | 1.11.3 | Общее QA |  | 10d | 2024-12-16 | 2024-12-27 |  | Manager-QA [50%]; QA [50%] | 15 |
| 114 | 1.11.4 | Модификация страницы просмотра лабораторных - для студента |  | 5d | 2024-12-02 | 2024-12-06 |  | Front dev 3 | 1.5 |
| 115 | 1.11.5 | Модификация страницы просмотра лабораторных - для учителя |  | 5d | 2024-12-02 | 2024-12-06 |  | Front dev 3 | 1.5 |
| 116 | 1.11.6 | Модификация страницы просмотра лабораторной - для студента |  | 5d | 2024-12-09 | 2024-12-13 |  | Front dev 3 | 1.5 |
| 117 | 1.11.7 | Модификация страницы просмотра лабораторной - для учителя |  | 5d | 2024-12-09 | 2024-12-13 |  | Front dev 3 | 1.5 |
| 118 | 1.11.8 | Модификация страницы просмотра попытки сдачи - для преподавателя |  | 5d | 2024-12-16 | 2024-12-20 |  | Front dev 3 | 1.5 |
| 119 | 1.11.9 | Переход к лабораторной по студенту |  | 5d | 2024-12-02 | 2024-12-06 |  | Front dev 2 | 1.5 |
| 120 | 1.11.10 | Фронт: исправление багов |  | 20d | 2024-12-02 | 2024-12-27 |  | Front dev 1; Front dev 2 | 20 |
| 121 | 1.11.11 | Бэк: исправление багов |  | 20d | 2024-12-02 | 2024-12-27 |  | Back dev 2; Back dev 3 | 20 |
| 122 | 1.11.12 | Данные для рейтинговой таблицы |  | 10d | 2024-12-02 | 2024-12-13 |  | Back dev 1 | 10 |
| 123 | 1.11.13 | Интеграция рейтинговой таблицы |  | 5d | 2024-12-23 | 2024-12-27 | 122, 124, 125 | Back dev 1; Front dev 1 | 8 |
| 124 | 1.11.14 | Рейтинговая таблица |  | 10d | 2024-12-02 | 2024-12-13 |  | Front dev 1 | 10 |
| 125 | 1.11.15 | Сортировки по срезу |  | 5d | 2024-12-16 | 2024-12-20 | 122 | Front dev 2 | 1.5 |
| 126 | 1.11.16 | Тесты под valgrind и санитайзерами |  | 10d | 2024-12-02 | 2024-12-13 |  | Sys dev 3 | 6 |
| 127 | 1.11.17 | Тесты с ограниченными ресурсами |  | 10d | 2024-12-02 | 2024-12-13 |  | Sys dev 4 | 6 |
| 128 | 1.11.18 | Интеграция: дополнительные тесты |  | 5d | 2024-12-16 | 2024-12-20 | 126, 127, 129, 130 | Sys dev 1; Sys dev 2; Sys dev 3; Sys dev 4 | 16 |
| 129 | 1.11.19 | Exec: ограничение fs, mount |  | 10d | 2024-12-02 | 2024-12-13 |  | Sys dev 1 | 6 |
| 130 | 1.11.20 | Exec: ограничение network workspace |  | 10d | 2024-12-02 | 2024-12-13 |  | Sys dev 2 | 6 |
| 131 | 1.12 | Фаза 3-дедлайн | milestone | 0d | 2024-12-30 | 2024-12-30 | 110FF |  |  |
